# Gantt Cloudifier

Schedule from MS Project, 2015-11-16 to 2017-06-26.

## Calendars

- Standard: Mon-Fri 08:00-12:00, 13:00-17:00; Sat-Sun off.

## Resources

| Resource |
| --- |
| Director proiect |
| Cercetator |
| dezvoltator software |
| dezvoltator extern |
| Management extern |
| auditor extern financiar |
| auditor extern tehnic |
| Intern |
| Extern |
| Intern + Extern |
| 31500 |
| 73250 |
| 85000 |
| 45000 |
| 50000 |
| 66000 |
| 89000 |
| 66750 |
| 22250 |
| 3000 |
| 21850 |
| 500 |
| 10000 |
| 5400 |
| Buget:31500 |
| Buget:73250 |
| Buget:85000 |
| Buget:45000 |
| Buget:50000 |
| Buget:66000 |
| Buget:89000 |
| Buget:66750 |
| Buget:22250 |
| Buget:21850 |
| Buget:3000 |
| Buget:5400 |
| Buget:10000 |
| Buget:70000 |
| Buget:40.000 |
| Buget:40000 |
| Buget:83833 |
| Buget:62875 |
| Buget:20958 |
| Buget:21900 |

## Schedule

| ID | WBS | Task | Type | Duration | Start | Finish | Predecessors | Total slack | Free slack | Constraint | Resources | Work |
| --- | --- | --- | --- | --- | --- | --- | --- | --- | --- | --- | --- | --- |
| 1 | 1 | **Cloudifier (activitati si bugete asociate)** |  | 421d? | 2015-11-16 | 2017-06-26 |  | 0d |  |  |  | 13016h |
| 2 | 1.1 | **1. Activitati de cercetare-dezvoltare** |  | 140d | 2015-11-16 | 2016-05-27 |  | 2d |  |  |  | 1120h |
| 3 | 1.1.1 | State-of-the-art |  | 35d | 2015-11-16 | 2016-01-01 |  | 2d | 0d |  | Buget:31500 | 280h |
| 4 | 1.1.2 | Analiza modele euristice |  | 35d | 2016-01-04 | 2016-02-19 | 3 | 2d | 0d |  | Buget:31500 | 280h |
| 5 | 1.1.3 | Arhitectura motor euristic |  | 35d | 2016-02-22 | 2016-04-08 | 4 | 2d | 0d |  | Buget:31500 | 280h |
| 6 | 1.1.4 | Arhitectura spatiu de lucru virtual |  | 35d | 2016-04-11 | 2016-05-27 | 5 | 2d | 0d |  | Buget:31500 | 280h |
| 7 | 1.2 | **2. Activitati de achizitie de servicii pentru cercetare-dezvoltare** |  | 86d | 2016-05-30 | 2016-09-26 |  | 9d |  |  |  | 688h |
| 8 | 1.2.1 | Programare motor experimental |  | 43d | 2016-05-30 | 2016-07-27 | 6 | 9d | 0d |  | Buget:73250 | 344h |
| 9 | 1.2.2 | Programare sistem Cloud |  | 43d | 2016-07-28 | 2016-09-26 | 8 | 9d | 7d |  | Buget:73250 | 344h |
| 10 | 1.3 | **3. Achizitie servicii de consultanta pentru inovare** |  | 420d | 2015-11-16 | 2017-06-23 |  | 1d |  |  |  | 3360h |
| 11 | 1.3.1 | Brevetare |  | 420d | 2015-11-16 | 2017-06-23 |  | 1d |  |  | Buget:70000 | 3360h |
| 12 | 1.4 | **4. Achizitii servicii suport pentru inovare** |  | 100d | 2016-05-02 | 2016-09-16 |  | 201d |  |  |  | 800h |
| 13 | 1.4.1 | Cercetare marketing |  | 100d | 2016-05-02 | 2016-09-16 |  | 201d |  | finish no earlier than 2016-09-16 | Buget:40000 | 800h |
| 14 | 1.5 | **5. Activitati pentru introducerea in productie si realizare produs/proces/tehnologie/serviciu** |  | 417d? | 2015-11-19 | 2017-06-23 |  | 1d |  |  |  | 2552h |
| 15 | 1.5.1 | Achizitia licente |  | 20d | 2015-11-19 | 2015-12-16 |  | 119d | 117d | finish no earlier than 2015-12-16 | Buget:50000 | 160h |
| 16 | 1.5.2 | Achizitia echipamente |  | 20d | 2015-11-19 | 2015-12-16 |  | 119d | 11d | finish no earlier than 2015-12-16 | Buget:66000 | 160h |
| 17 | 1.5.3 | Configurare/ implementare mediu productie |  | 93d | 2016-05-30 | 2016-10-05 | 6, 15, 16 | 2d | 0d |  | Buget:83833 | 744h |
| 18 | 1.5.4 | Programare productie |  | 93d | 2016-10-06 | 2017-02-13 | 17, 9 | 2d | 0d | start no earlier than 2016-02-01 | Buget:83833 | 744h |
| 19 | 1.5.5 | Testare |  | 73d | 2017-02-14 | 2017-05-25 | 18 | 2d | 1d |  | Buget:62875 | 584h |
| 20 | 1.5.6 | Punerea in fabricatie pentru produs/tehnologie |  | 20d? | 2017-05-29 | 2017-06-23 | 19 | 1d |  | finish no earlier than 2017-06-23 | Buget:20958 | 160h |
| 21 | 1.6 | **8. Activitati de Informare si publicitate privind proiectul** |  | 421d | 2015-11-16 | 2017-06-26 |  | 0d |  |  |  | 336h |
| 22 | 1.6.1 | Anunt lansare proiect | milestone | 1d | 2015-11-16 | 2015-11-16 |  | 420d |  |  | 3000 | 8h |
| 23 | 1.6.2 | Anunt finalizare proiect | milestone | 1d | 2017-06-26 | 2017-06-26 |  | 0d |  | start no earlier than 2017-06-26 | 3000 | 8h |
| 24 | 1.6.3 | Materiale publicitare |  | 40d | 2016-01-01 | 2016-02-25 | 16 | 347d |  | start no earlier than 2016-01-01 | Buget:21900 | 320h |

| ID | WBS | Task | Type | Duration | Start | Finish | Predecessors | Total slack | Free slack | Constraint | Resources | Work |
| --- | --- | --- | --- | --- | --- | --- | --- | --- | --- | --- | --- | --- |
| 25 | 1.7 | **10.Activitati pentru Management de proiect (obligatorii si neeligibile)** |  | 421d | 2015-11-16 | 2017-06-26 |  | 0d |  |  |  | 3360h |
| 26 | 1.7.1 | Metodologie |  | 10d | 2015-11-16 | 2015-11-27 |  | 1d | 0d |  | Buget:3000 | 80h |
| 27 | 1.7.2 | Monitorizare si Evaluare |  | 410d | 2015-11-30 | 2017-06-23 | 26 | 1d |  |  | Buget:10000 | 3280h |
| 28 | 1.7.3 | Rambursare 1 | milestone | 1d | 2016-01-18 | 2016-01-18 |  | 370d | 85d | start no earlier than 2016-01-17 |  |  |
| 29 | 1.7.4 | Rambursare 2 | milestone | 1d | 2016-05-17 | 2016-05-17 | 28 | 285d | 86d | finish no earlier than 2016-05-17 |  |  |
| 30 | 1.7.5 | Rambursare 3 | milestone | 1d | 2016-09-15 | 2016-09-15 | 29 | 199d | 86d | start no earlier than 2016-09-15 |  |  |
| 31 | 1.7.6 | Rambursare 4 | milestone | 1d | 2017-01-16 | 2017-01-16 | 30 | 113d | 42d | start no earlier than 2017-01-16 |  |  |
| 32 | 1.7.7 | Rambursare 5 | milestone | 1d | 2017-03-16 | 2017-03-16 | 31 | 71d |  | start no earlier than 2017-03-16 |  |  |
| 33 | 1.7.8 | Rambursare 6 | milestone | 1d | 2017-06-26 | 2017-06-26 | 32 | 0d |  | start no earlier than 2017-06-26 |  |  |
| 34 | 1.8 | **11. Activitati pentru Audit final al proiectului (obligatorii si neeligibile)** |  | 100d? | 2017-02-07 | 2017-06-26 |  | 0d |  | finish no later than 2017-06-26 |  | 800h |
| 35 | 1.8.1 | Audit Financiar |  | 100d? | 2017-02-07 | 2017-06-26 |  | 0d |  | finish no earlier than 2017-06-26 | Buget:5400 | 800h |
