# Gantt Cloudifier FINAL

Schedule from MS Project, 2015-11-16 to 2017-06-26.

## Calendars

- Standard: Mon-Fri 08:00-12:00, 13:00-17:00; Sat-Sun off.

## Resources

| Resource |
| --- |
| Director proiect |
| Cercetator |
| dezvoltator software |
| dezvoltator extern |
| Management extern |
| auditor extern financiar |
| auditor extern tehnic |

## Schedule

| ID | WBS | Task | Type | Duration | Start | Finish | Predecessors | Total slack | Free slack | Constraint |
| --- | --- | --- | --- | --- | --- | --- | --- | --- | --- | --- |
| 1 | 1 | **Proiect Cloudifier** |  | 421d? | 2015-11-16 | 2017-06-26 |  | 0d |  |  |
| 2 | 1.1 | **1. Activitati de cercetare-dezvoltare** |  | 140d | 2015-11-16 | 2016-05-27 |  | 1d |  |  |
| 3 | 1.1.1 | State-of-the-art |  | 35d | 2015-11-16 | 2016-01-01 |  | 1d | 0d |  |
| 4 | 1.1.2 | Analiza modele euristice |  | 35d | 2016-01-04 | 2016-02-19 | 3 | 1d | 0d |  |
| 5 | 1.1.3 | Arhitectura motor euristic |  | 35d | 2016-02-22 | 2016-04-08 | 4 | 1d | 0d |  |
| 6 | 1.1.4 | Arhitectura spatiu de lucru virtual |  | 35d | 2016-04-11 | 2016-05-27 | 5 | 1d | 0d |  |
| 7 | 1.2 | **2. Activitati de achizitie de servicii pentru cercetare-dezvoltare** |  | 86d | 2016-05-30 | 2016-09-26 |  | 8d |  |  |
| 8 | 1.2.1 | Programare motor experimental |  | 43d | 2016-05-30 | 2016-07-27 | 6 | 8d | 0d |  |
| 9 | 1.2.2 | Programare sistem Cloud |  | 43d | 2016-07-28 | 2016-09-26 | 8 | 8d | 7d |  |
| 10 | 1.3 | **3. Achizitie servicii de consultanta pentru inovare** |  | 420d | 2015-11-16 | 2017-06-23 |  | 1d |  |  |
| 11 | 1.3.1 | Brevetare |  | 420d | 2015-11-16 | 2017-06-23 |  | 1d |  |  |
| 12 | 1.4 | **4. Achizitii servicii suport pentru inovare** |  | 100d | 2016-05-02 | 2016-09-16 |  | 201d |  |  |
| 13 | 1.4.1 | Cercetare marketing |  | 100d | 2016-05-02 | 2016-09-16 |  | 201d |  | finish no earlier than 2016-09-16 |
| 14 | 1.5 | **5. Activitati pentru introducerea in productie si realizare produs/proces/tehnologie/serviciu** |  | 420d? | 2015-11-16 | 2017-06-23 |  | 1d |  |  |
| 15 | 1.5.1 | Achizitia licente |  | 23d? | 2015-11-16 | 2015-12-16 |  | 118d | 117d | finish no earlier than 2015-12-16 |
| 16 | 1.5.2 | Achizitia echipamente |  | 23d | 2015-11-16 | 2015-12-16 |  | 118d | 117d | start no earlier than 2015-11-16 |
| 17 | 1.5.3 | Configurare/ implementare mediu productie |  | 93d | 2016-05-30 | 2016-10-05 | 6, 15, 16 | 1d | 0d |  |
| 18 | 1.5.4 | Programare productie |  | 93d | 2016-10-06 | 2017-02-13 | 17, 9 | 1d | 0d | start no earlier than 2016-02-01 |
| 19 | 1.5.5 | Testare |  | 93d | 2017-02-14 | 2017-06-22 | 18 | 1d | 0d |  |
| 20 | 1.5.6 | Punerea in fabricatie pentru produs/tehnologie | milestone | 1d? | 2017-06-23 | 2017-06-23 | 19 | 1d |  |  |
| 21 | 1.6 | **8. Activitati de Informare si publicitate privind proiectul** |  | 290d? | 2015-11-16 | 2016-12-23 |  | 131d |  |  |
| 22 | 1.6.1 | Anunt | milestone | 1d? | 2015-11-16 | 2015-11-16 |  | 420d |  |  |
| 23 | 1.6.2 | Anunt | milestone | 1d? | 2016-07-22 | 2016-07-24 |  | 241d |  | finish no earlier than 2016-07-24 |
| 24 | 1.6.3 | Materiale |  | 40d | 2016-10-31 | 2016-12-23 |  | 131d |  | start no earlier than 2016-10-30 |

| ID | WBS | Task | Type | Duration | Start | Finish | Predecessors | Total slack | Free slack | Constraint |
| --- | --- | --- | --- | --- | --- | --- | --- | --- | --- | --- |
| 25 | 1.7 | **10.Activitati pentru Management de proiect (obligatorii si neeligibile)** |  | 421d? | 2015-11-16 | 2017-06-26 |  | 0d |  |  |
| 26 | 1.7.1 | Metodologie |  | 10d | 2015-11-16 | 2015-11-27 |  | 1d | 0d |  |
| 27 | 1.7.2 | M&E |  | 410d | 2015-11-30 | 2017-06-23 | 26 | 1d |  |  |
| 28 | 1.7.3 | R1 | milestone | 1d? | 2016-01-18 | 2016-01-18 |  | 370d | 85d | start no earlier than 2016-01-17 |
| 29 | 1.7.4 | R2 | milestone | 1d | 2016-05-17 | 2016-05-17 | 28 | 285d | 86d | finish no earlier than 2016-05-17 |
| 30 | 1.7.5 | R3 | milestone | 1d? | 2016-09-15 | 2016-09-15 | 29 | 199d | 86d | start no earlier than 2016-09-15 |
| 31 | 1.7.6 | R4 | milestone | 1d | 2017-01-16 | 2017-01-16 | 30 | 113d | 42d | start no earlier than 2017-01-16 |
| 32 | 1.7.7 | R5 | milestone | 1d | 2017-03-16 | 2017-03-16 | 31 | 71d | 0d | start no earlier than 2017-03-16 |
| 33 | 1.7.8 | R6 | milestone | 1d | 2017-06-26 | 2017-06-26 | 32 | 0d |  | start no earlier than 2017-06-26 |
| 34 | 1.8 | **11. Activitati pentru Audit final al proiectului (obligtorii si neeligibile)** |  | 270d? | 2016-06-14 | 2017-06-26 |  | 0d |  |  |
| 35 | 1.8.1 | Tehnic | milestone | 270d? | 2016-06-14 | 2017-06-26 |  | 0d |  | finish no earlier than 2017-06-26 |
| 36 | 1.8.2 | Financiar | milestone | 270d? | 2016-06-14 | 2017-06-26 |  | 0d |  | finish no earlier than 2017-06-26 |
