# Gantt Cloudifier

Schedule from MS Project, 2016-09-09 to 2018-04-20.

## Calendars

- Standard: Mon-Fri 08:00-12:00, 13:00-17:00; Sat-Sun off.

## Resources

| Resource |
| --- |
| Director proiect |
| Cercetator |
| dezvoltator software |
| dezvoltator extern |
| Management extern |
| auditor extern financiar |
| auditor extern tehnic |
| Intern |
| Extern |
| Intern + Extern |
| 31500 |
| 73250 |
| 85000 |
| 45000 |
| 50000 |
| 66000 |
| 89000 |
| 66750 |
| 22250 |
| 3000 |
| 21850 |
| 500 |
| 10000 |
| 5400 |
| Buget:31500 |
| Buget:73250 |
| Buget:85000 |
| Buget:45000 |
| Buget:50000 |
| Buget:66000 |
| Buget:89000 |
| Buget:66750 |
| Buget:22250 |
| Buget:21850 |
| Buget:3000 |
| Buget:5400 |
| Buget:10000 |
| Buget:70000 |
| Buget:40.000 |
| Buget:40000 |
| Buget:83833 |
| Buget:62875 |
| Buget:20958 |
| Buget:21900 |

## Schedule

| ID | WBS | Task | Type | Duration | Start | Finish | Predecessors | Total slack | Free slack | Constraint | Resources | Work |
| --- | --- | --- | --- | --- | --- | --- | --- | --- | --- | --- | --- | --- |
| 1 | 1 | **Cloudifier (activitati si bugete asociate)** |  | 421d? | 2016-09-09 | 2018-04-20 |  | 0d |  |  |  | 4752h |
| 2 | 1.1 | Kick-off | milestone | 1d? | 2016-09-09 | 2016-09-09 |  | 0d |  | start no earlier than 2016-09-09 |  |  |
| 3 | 1.2 | **1. Activitati de cercetare-dezvoltare** |  | 140d | 2016-09-12 | 2017-03-24 | 2 | 1d |  |  |  | 1120h |
| 4 | 1.2.1 | State-of-the-art |  | 35d | 2016-09-12 | 2016-10-28 |  | 1d | 0d |  | Buget:31500 | 280h |
| 5 | 1.2.2 | Analiza modele euristice |  | 35d | 2016-10-31 | 2016-12-16 | 4 | 1d | 0d |  | Buget:31500 | 280h |
| 6 | 1.2.3 | Arhitectura motor euristic |  | 35d | 2016-12-19 | 2017-02-03 | 5 | 1d | 0d |  | Buget:31500 | 280h |
| 7 | 1.2.4 | Arhitectura spatiu de lucru virtual |  | 35d | 2017-02-06 | 2017-03-24 | 6 | 1d | 0d |  | Buget:31500 | 280h |
| 8 | 1.3 | **2. Servicii pentru cercetare-dezvoltare** |  | 86d | 2017-03-27 | 2017-07-24 |  | 8d |  |  |  | 688h |
| 9 | 1.3.1 | Programare motor experimental |  | 43d | 2017-03-27 | 2017-05-24 | 7 | 8d | 0d |  | Buget:73250 | 344h |
| 10 | 1.3.2 | Programare sistem Cloud |  | 43d | 2017-05-25 | 2017-07-24 | 9 | 8d | 7d |  | Buget:73250 | 344h |
| 11 | 1.4 | **3. Servicii de consultanta pentru inovare** |  | 420d | 2016-09-12 | 2018-04-20 | 2 | 0d |  |  |  |  |
| 12 | 1.4.1 | Brevetare |  | 420d | 2016-09-12 | 2018-04-20 |  | 0d |  |  |  |  |
| 13 | 1.5 | **4. Achizitii servicii suport pentru inovare** |  | 100d | 2016-09-12 | 2017-01-27 | 2 | 320d |  |  |  | 800h |
| 14 | 1.5.1 | Cercetare marketing |  | 100d | 2016-09-12 | 2017-01-27 |  | 320d |  | finish no earlier than 2016-09-16 | Buget:40000 | 800h |
| 15 | 1.6 | **5. Productie si realizare serviciu** |  | 419d? | 2016-09-12 | 2018-04-19 | 2 | 1d |  |  |  | 1808h |
| 16 | 1.6.1 | Achizitia licente |  | 20d | 2016-09-12 | 2016-10-07 |  | 121d | 120d | finish no earlier than 2015-12-16 | Buget:50000 | 160h |
| 17 | 1.6.2 | Achizitia echipamente |  | 20d | 2016-09-12 | 2016-10-07 |  | 121d | 0d | finish no earlier than 2015-12-16 | Buget:66000 | 160h |
| 18 | 1.6.3 | Configurare/ implementare mediu productie |  | 93d | 2017-03-27 | 2017-08-02 | 7, 16, 17 | 1d | 0d |  | Buget:83833 | 744h |
| 19 | 1.6.4 | Programare productie |  | 93d | 2017-08-03 | 2017-12-11 | 18, 10 | 1d | 0d | start no earlier than 2016-02-01 | Buget:83833 | 744h |
| 20 | 1.6.5 | Testare |  | 73d | 2017-12-12 | 2018-03-22 | 19 | 1d | 0d |  |  |  |
| 21 | 1.6.6 | Punerea in fabricatie pentru produs/tehnologie |  | 20d? | 2018-03-23 | 2018-04-19 | 20 | 1d |  | finish no earlier than 2017-06-23 |  |  |
| 22 | 1.7 | **8. Informare si publicitate privind proiectul** |  | 206d | 2016-09-12 | 2017-06-26 | 2 | 214d |  |  |  | 336h |
| 23 | 1.7.1 | Anunt lansare proiect | milestone | 1d | 2016-09-12 | 2016-09-12 |  | 419d |  |  | 3000 | 8h |
| 24 | 1.7.2 | Anunt finalizare proiect | milestone | 1d | 2017-06-26 | 2017-06-26 |  | 214d |  | start no earlier than 2017-06-26 | 3000 | 8h |
| 25 | 1.7.3 | Materiale publicitare |  | 40d | 2016-10-10 | 2016-12-02 | 17 | 360d |  | start no earlier than 2016-01-01 | Buget:21900 | 320h |
